# PJ251710

Schedule from GanttProject, 2025-10-23 to 2026-01-05.
Katalyst
Gestor Documental
Holidays every year on 01-01, 01-06, 05-01, 08-15, 10-12, 11-01, 12-06, 12-08, 12-25

## Calendars

- Project calendar: Mon-Fri working; Sat-Sun off.

## Resources

| Resource | Group | Rate |
| --- | --- | --- |
| Marck D. Carrión Guzmán | Manager | 140 |
| Dev 1 | Developer | 20 |
| Dev 2 | Developer | 20 |
| Dev 3 | Developer | 20 |
| Senior 1 | Developer | 40 |
| DevOps | DevOps | 30 |

## Schedule

| ID | WBS | Task | Duration | Start | Finish | Predecessors | Constraint | Resources | Code |
| --- | --- | --- | --- | --- | --- | --- | --- | --- | --- |
| 1 | 1 | **[PJ-00] Preparacion De entorno** | 0d | 2025-10-23 | 2025-10-23 |  |  | Marck D. Carrión Guzmán [0%] | 00 |
| 2 | 1.1 | [PJ-0001] Configurar Mono Repo | 1d | 2025-10-23 | 2025-10-23 |  |  | DevOps | 00 01 |
| 3 | 1.2 | [PJ-0002] Levantar Contenedores Base | 3d | 2025-10-24 | 2025-10-28 | 2 | start no earlier than 2025-10-22 | DevOps | 00 02 |
| 4 | 1.3 | [PJ-0003] Configuración de redes y volúmenes | 4d | 2025-10-29 | 2025-11-03 | 3 | start no earlier than 2025-10-21 | DevOps | 00 03 |
| 5 | 1.4 | [PJ-0004] Desarrollo de guías | 5d | 2025-11-04 | 2025-11-10 | 4 |  | DevOps | 00 04 |
| 6 | 1.5 | [PJ-0005] Documentación inicial de entorno | 1d | 2025-11-11 | 2025-11-11 | 5 |  | DevOps | 00 05 |
| 7 | 2 | **[PJ-01] Desarrollo microservicios Rust** | 0d | 2025-11-18 | 2025-11-18 |  |  |  | 01 |
| 8 | 2.1 | [PJ-0101] sgd-core-documents | 5d | 2025-11-18 | 2025-11-24 | 17 | start no earlier than 2025-10-21 |  | 01 01 |
| 9 | 2.2 | [PJ-0102] sgd-versions | 4d | 2025-11-25 | 2025-11-28 | 8 |  |  | 01 02 |
| 10 | 2.3 | [PJ-0103] sgd-trd | 4d | 2025-12-01 | 2025-12-04 | 9 |  |  | 01 03 |
| 11 | 2.4 | [PJ-0104] sgd-audit | 4d | 2025-12-05 | 2025-12-11 | 10 |  |  | 01 04 |
| 12 | 2.5 | [PJ-0105] sgd-relations | 4d | 2025-12-12 | 2025-12-17 | 11 |  |  | 01 05 |
| 13 | 2.6 | [PJ-0106] sgd-indexer | 4d | 2025-12-18 | 2025-12-23 | 12 |  |  | 01 06 |
| 14 | 2.7 | [PJ-0107] sgd-policy-engine | 4d | 2025-12-24 | 2025-12-30 | 13 |  |  | 01 07 |
| 15 | 2.8 | [PJ-0108] sgd-events-outbox | 3d | 2025-12-31 | 2026-01-05 | 14 |  |  | 01 08 |
| 16 | 3 | **[PJ-02] SDK** | 0d | 2025-11-12 | 2025-11-12 | 1 |  |  | 02 |
| 17 | 3.1 | [PJ-0201] Librerías Rust | 4d | 2025-11-12 | 2025-11-17 |  |  |  | 02 01 |
| 18 | 3.2 | [PJ-0202] Librerías Python | 4d | 2025-11-12 | 2025-11-17 |  |  |  | 02 02 |
| 19 | 4 | **[PJ-03] API Gateway** | 0d | 2025-11-18 | 2025-11-18 | 18 |  |  | 03 |
| 20 | 4.1 | [PJ-0301] Estructura y Base | 2d | 2025-11-18 | 2025-11-19 |  |  |  | 03 01 |
| 21 | 4.2 | [PJ-0302] Comunicación MQ | 3d | 2025-11-20 | 2025-11-24 | 20 |  |  | 03 02 |
| 22 | 4.3 | [PJ-0303] Autenticación y Seguridad | 2d | 2025-11-25 | 2025-11-26 | 21 |  |  | 03 03 |
| 23 | 4.4 | [PJ-0304] Endpoints | 6d | 2025-11-27 | 2025-12-04 | 22 |  |  | 03 04 |

Notes:
- 2: Configurar repositorio monorepo y estructura base (Rust + Python + shared)
- 3: Levantar contenedores base: PostgreSQL, RabbitMQ, OpenSearch, Docker Compose
- 4: Configuración de redes internas, volúmenes persistentes, pruebas de conectividad entre servicios
- 5: Documentación inicial del stack y guías de desarrollo
- 8: CRUD documentos, hash, triggers outbox, MQ
- 9: Control versiones, incremento automático, eventos MQ
- 10: Gestión series documentales, TRD, MQ
- 11: Auditoría encadenada, exportación JSON/XML
- 12: Relaciones documentos, MQ
- 13: Indexación en OpenSearch, sincronización eventos
- 14: Motor de políticas, retención documental, eventos MQ
- 15: Publicación de eventos pendientes a RabbitMQ
